# One Box_Project_Initial EV Measurement

Schedule from MS Project, 2023-01-02 to 2023-10-17, costs in $, A marks actual dates.
NC State University

## Calendars

- Standard: Mon-Fri 08:00-12:00, 13:00-17:00; Sat-Sun off.

## Resources

| Resource | Group | Rate |
| --- | --- | --- |
| Design | R&D | 100 |
| Documentation | R&D | 75 |
| Assembly/Test | R&D | 80 |
| Purchasing | Procurement | 75 |
| Development | R&D | 85 |
| Fianance | Finance | 100 |
| Marketing | Marketing | 75 |
| OC Design Team | R&D | 50 |
| OC Development Team | R&D | 42.5 |
| OC Assembly/Test | R&D | 40 |
| OC Finance | Finance | 50 |
| OC Purchasing | Oprocurement | 37.5 |
| OC Documentation | Documentation | 37.5 |

## Schedule

| ID | WBS | Task | Duration | Start | Finish | Predecessors | Complete | Remaining | Total slack | Free slack | Resources | Work | Actual work | Cost | Actual cost |
| --- | --- | --- | --- | --- | --- | --- | --- | --- | --- | --- | --- | --- | --- | --- | --- |
| 1 | 1 | **Magic Box Console** | 207d | 2023-01-02 A | 2023-10-17 |  | 42% | 119.59d | 0d |  |  | 7272h | 3466.4h | 368,180 | 190,961 |
| 2 | 1.1 | **Project Planning and Management** | 19d | 2023-01-27 A | 2023-02-22 A |  | 100% |  |  |  |  | 296h | 296h | 28,760 | 28,760 |
| 3 | 1.1.1 | Define project scope and objectives | 5d | 2023-01-27 A | 2023-02-02 A | 10 | 100% |  |  |  | Design | 40h | 40h | 4,000 | 4,000 |
| 4 | 1.1.2 | Develop project schedule | 7d | 2023-02-14 A | 2023-02-22 A | 11 | 100% |  |  |  | Design; Development | 112h | 112h | 10,360 | 10,360 |
| 5 | 1.1.3 | Establish project budget | 7d | 2023-02-14 A | 2023-02-22 A | 11 | 100% |  |  |  | Design; Fianance | 112h | 112h | 11,200 | 11,200 |
| 6 | 1.1.4 | Assemble project team | 2d | 2023-02-14 A | 2023-02-15 A | 11 | 100% |  |  |  | Design | 16h | 16h | 1,600 | 1,600 |
| 7 | 1.1.5 | Develop project communication plan | 2d | 2023-02-16 A | 2023-02-17 A | 11 | 100% |  |  |  | Design | 16h | 16h | 1,600 | 1,600 |
| 8 | 1.2 | **Requirement and concept development** | 45d | 2023-01-02 A | 2023-03-03 A |  | 100% |  |  |  |  | 376h | 376h | 32,960 | 32,960 |
| 9 | 1.2.1 | Conduct market research | 12d | 2023-01-02 A | 2023-01-17 A |  | 100% |  |  |  | Marketing | 96h | 96h | 7,200 | 7,200 |
| 10 | 1.2.2 | Define product requirements | 7d | 2023-01-18 A | 2023-01-26 A | 9 | 100% |  |  |  | Marketing; Design | 112h | 112h | 9,800 | 9,800 |
| 11 | 1.2.3 | Develop product concept | 7d | 2023-02-03 A | 2023-02-13 A | 3 | 100% |  |  |  | Design | 56h | 56h | 5,600 | 5,600 |
| 12 | 1.2.4 | Evaluate and select initial product design | 7d | 2023-02-23 A | 2023-03-03 A | 4, 5, 6, 7 | 100% |  |  |  | Design; Development | 112h | 112h | 10,360 | 10,360 |
| 13 | 1.3 | **Product design and development** | 89d | 2023-03-06 A | 2023-07-06 |  | 50% | 44.39d | 0d |  |  | 5000h | 2794.4h | 230,900 | 129,241 |
| 14 | 1.3.1 | **Hardware development** | 47d | 2023-03-06 A | 2023-05-09 |  | 75% | 11.71d | 28d |  |  | 2616h | 2122.4h | 120,640 | 98,161 |
| 15 | 1.3.1.1 | **PCB design** | 42d | 2023-03-06 A | 2023-05-02 |  | 70% | 12.44d | 28d |  |  | 1456h | 1024.8h | 67,340 | 47,397 |
| 16 | 1.3.1.1.1 | Network module | 21d | 2023-03-06 A | 2023-04-03 | 12 | 80% | 4.2d | 49d | 21d | OC Design Team; OC Development Team | 336h | 268.8h | 15,540 | 12,432 |
| 17 | 1.3.1.1.2 | Processor design | 21d | 2023-03-06 A | 2023-04-03 | 12 | 80% | 4.2d | 49d | 21d | OC Design Team; OC Development Team | 336h | 268.8h | 15,540 | 12,432 |
| 18 | 1.3.1.1.3 | GPU and RAM | 7d | 2023-04-24 | 2023-05-02 | 12 |  |  | 28d | 0d | OC Design Team; OC Development Team | 112h |  | 5,180 |  |
| 19 | 1.3.1.1.4 | Storage and optical drive | 21d | 2023-04-04 A | 2023-05-02 | 12 | 75% | 5.25d | 28d | 0d | OC Design Team; OC Development Team | 336h | 252h | 15,540 | 11,655 |
| 20 | 1.3.1.1.5 | Sensors | 21d | 2023-04-04 A | 2023-05-02 | 12 | 70% | 6.3d | 28d | 0d | OC Design Team; OC Development Team | 336h | 235.2h | 15,540 | 10,878 |
| 21 | 1.3.1.2 | **Panel design** | 35d | 2023-03-06 A | 2023-04-21 |  | 98% | 0.7d | 35d |  | OC Design Team; OC Development Team | 1120h | 1097.6h | 51,800 | 50,764 |
| 22 | 1.3.1.2.1 | Metal casing | 21d | 2023-03-06 A | 2023-04-03 A | 12 | 100% |  |  |  | OC Design Team; OC Development Team | 336h | 336h | 15,540 | 15,540 |
| 23 | 1.3.1.2.2 | Display | 7d | 2023-04-04 A | 2023-04-12 A | 12 | 100% |  |  |  | OC Design Team; OC Development Team | 112h | 112h | 5,180 | 5,180 |
| 24 | 1.3.1.2.3 | Switches | 7d | 2023-04-13 A | 2023-04-21 | 12 | 90% | 0.7d | 35d | 7d | OC Design Team; OC Development Team | 112h | 100.8h | 5,180 | 4,662 |
| 25 | 1.3.1.3 | Hardware doccumentation | 5d | 2023-05-03 | 2023-05-09 | 16, 17, 18, 19, 20, 22, 23, 24 |  |  | 28d |  | OC Documentation | 40h |  | 1,500 |  |

| ID | WBS | Task | Type | Duration | Start | Finish | Predecessors | Complete | Remaining | Total slack | Free slack | Resources | Work | Actual work | Cost | Actual cost |
| --- | --- | --- | --- | --- | --- | --- | --- | --- | --- | --- | --- | --- | --- | --- | --- | --- |
| 26 | 1.3.2 | **Software development** |  | 75d | 2023-03-06 A | 2023-06-16 |  | 31% | 51.67d | 0d |  |  | 2160h | 672h | 99,900 | 31,080 |
| 27 | 1.3.2.1 | UI design |  | 60d | 2023-03-06 A | 2023-05-26 | 12 | 35% | 39d | 10d |  | OC Design Team; OC Development Team | 960h | 336h | 44,400 | 15,540 |
| 28 | 1.3.2.2 | Patch design |  | 70d | 2023-03-06 A | 2023-06-09 | 12 | 30% | 49d | 0d |  | OC Design Team; OC Development Team | 1120h | 336h | 51,800 | 15,540 |
| 29 | 1.3.2.3 | Software documentation |  | 5d | 2023-06-12 | 2023-06-16 | 27, 28 |  |  | 0d |  | OC Design Team; OC Development Team | 80h |  | 3,700 |  |
| 30 | 1.3.3 | Design verification and validation |  | 14d | 2023-06-19 | 2023-07-06 | 25, 29 |  |  | 0d |  | OC Design Team; OC Development Team | 224h |  | 10,360 |  |
| 31 | 1.4 | **Component sourcing and procurement** |  | 27d | 2023-08-17 | 2023-09-22 |  |  |  | 4d |  |  | 216h |  | 8,100 |  |
| 32 | 1.4.1 | Source components and material |  | 15d | 2023-08-17 | 2023-09-06 | 40 |  |  | 4d | 0d | OC Purchasing | 120h |  | 4,500 |  |
| 33 | 1.4.2 | Finalize component contracts |  | 7d | 2023-09-07 | 2023-09-15 | 32 |  |  | 4d | 0d | OC Purchasing | 56h |  | 2,100 |  |
| 34 | 1.4.3 | Manage component delivery schedule |  | 5d | 2023-09-18 | 2023-09-22 | 33 |  |  | 4d |  | OC Purchasing | 40h |  | 1,500 |  |
| 35 | 1.5 | **Assembly and Testing** |  | 29d | 2023-07-07 | 2023-08-16 |  |  |  | 4d |  |  | 776h |  | 42,180 |  |
| 36 | 1.5.1 | **Assembly testing and validation of preprocessing units** |  | 24d | 2023-07-07 | 2023-08-09 |  |  |  | 4d |  |  | 656h |  | 36,880 |  |
| 37 | 1.5.1.1 | Prototype design |  | 12d | 2023-07-07 | 2023-07-24 | 30 |  |  | 4d | 0d | Development; Assembly/Test; OC Assembly/Test; OC Development Team | 384h |  | 23,760 |  |
| 38 | 1.5.1.2 | Prototype assembly |  | 7d | 2023-07-25 | 2023-08-02 | 37 |  |  | 4d | 0d | OC Assembly/Test; OC Development Team | 112h |  | 4,620 |  |
| 39 | 1.5.1.3 | Prototype testing |  | 5d | 2023-08-03 | 2023-08-09 | 38 |  |  | 4d | 0d | Assembly/Test; OC Assembly/Test; OC Design Team; OC Development Team | 160h |  | 8,500 |  |
| 40 | 1.5.2 | Addressing any design issues or defects |  | 5d | 2023-08-10 | 2023-08-16 | 39 |  |  | 4d | 0d | OC Assembly/Test; OC Design Team; OC Development Team | 120h |  | 5,300 |  |
| 41 | 1.6 | **Mass production** |  | 73d | 2023-07-07 | 2023-10-17 |  |  |  | 0d |  |  | 608h |  | 25,280 |  |
| 42 | 1.6.1 | Establish production process |  | 60d | 2023-07-07 | 2023-09-28 | 30 |  |  | 0d |  | OC Assembly/Test | 480h |  | 19,200 |  |
| 43 | 1.6.2 | Assembly and batch maufacturing |  | 10d | 2023-09-29 | 2023-10-12 | 42, 34 |  |  | 0d |  | OC Assembly/Test | 80h |  | 3,200 |  |
| 44 | 1.6.3 | Qualiity control and Rolling out first batch |  | 3d | 2023-10-13 | 2023-10-17 | 43 |  |  | 0d |  | Assembly/Test; OC Assembly/Test | 48h |  | 2,880 |  |
| 45 | 1.7 | **Logistics and Distribution** |  | 0d | 2023-02-13 | 2023-02-13 |  |  |  | 176d |  |  |  |  |  |  |
| 46 | 1.7.1 | Develop logiostics plan | milestone | 0d | 2023-02-13 | 2023-02-13 | 11 |  |  | 176d | 0d |  |  |  |  |  |
| 47 | 1.7.2 | Packaging and shipping | milestone | 0d | 2023-02-13 | 2023-02-13 | 46 |  |  | 176d | 0d |  |  |  |  |  |
| 48 | 1.7.3 | Inventory and warehousing | milestone | 0d | 2023-02-13 | 2023-02-13 | 46, 47 |  |  | 176d | 0d |  |  |  |  |  |
| 49 | 1.7.4 | Coordinated product delivery and distribution | milestone | 0d | 2023-02-13 | 2023-02-13 | 48 |  |  | 176d | 0d |  |  |  |  |  |

| ID | WBS | Task | Type | Duration | Start | Finish | Predecessors | Total slack |
| --- | --- | --- | --- | --- | --- | --- | --- | --- |
| 50 | 1.8 | **Post -Launch Process** |  | 0d | 2023-02-13 | 2023-02-13 |  | 176d |
| 51 | 1.8.1 | Provide technical support and after sales customer services | milestone | 0d | 2023-02-13 | 2023-02-13 | 49 | 176d |
| 52 | 1.8.2 | Monitoring product performance | milestone | 0d | 2023-02-13 | 2023-02-13 | 49 | 176d |
| 53 | 1.8.3 | Addressing issues and performance improvements | milestone | 0d | 2023-02-13 | 2023-02-13 | 49 | 176d |
