# One Box_Project_Initial WBS

Schedule from MS Project, 2023-01-02 to 2023-10-17, costs in $.
NC State University

## Calendars

- Standard: Mon-Fri 08:00-12:00, 13:00-17:00; Sat-Sun off.

## Resources

| Resource | Group | Rate |
| --- | --- | --- |
| Design | R&D | 100 |
| Documentation | R&D | 75 |
| Assembly/Test | R&D | 80 |
| Purchasing | Procurement | 75 |
| Development | R&D | 85 |
| Fianance | Finance | 100 |
| Marketing | Marketing | 75 |
| OC Design Team | R&D | 50 |
| OC Development Team | R&D | 42.5 |
| OC Assembly/Test | R&D | 40 |
| OC Finance | Finance | 50 |
| OC Purchasing | Oprocurement | 37.5 |
| OC Documentation | Documentation | 37.5 |

## Schedule

| ID | WBS | Task | Duration | Start | Finish | Predecessors | Total slack | Free slack | Resources | Work | Cost |
| --- | --- | --- | --- | --- | --- | --- | --- | --- | --- | --- | --- |
| 1 | 1 | **Magic Box Console** | 207d | 2023-01-02 | 2023-10-17 |  | 0d |  |  | 7272h | 368,180 |
| 2 | 1.1 | **Project Planning and Management** | 19d | 2023-01-27 | 2023-02-22 |  | 0d |  |  | 296h | 28,760 |
| 3 | 1.1.1 | Define project scope and objectives | 5d | 2023-01-27 | 2023-02-02 | 10 | 0d |  | Design | 40h | 4,000 |
| 4 | 1.1.2 | Develop project schedule | 7d | 2023-02-14 | 2023-02-22 | 11 | 0d |  | Design; Development | 112h | 10,360 |
| 5 | 1.1.3 | Establish project budget | 7d | 2023-02-14 | 2023-02-22 | 11 | 0d |  | Design; Fianance | 112h | 11,200 |
| 6 | 1.1.4 | Assemble project team | 2d | 2023-02-14 | 2023-02-15 | 11 | 5d |  | Design | 16h | 1,600 |
| 7 | 1.1.5 | Develop project communication plan | 2d | 2023-02-16 | 2023-02-17 | 11 | 3d |  | Design | 16h | 1,600 |
| 8 | 1.2 | **Requirement and concept development** | 45d | 2023-01-02 | 2023-03-03 |  | 0d |  |  | 376h | 32,960 |
| 9 | 1.2.1 | Conduct market research | 12d | 2023-01-02 | 2023-01-17 |  | 0d |  | Marketing | 96h | 7,200 |
| 10 | 1.2.2 | Define product requirements | 7d | 2023-01-18 | 2023-01-26 | 9 | 0d |  | Marketing; Design | 112h | 9,800 |
| 11 | 1.2.3 | Develop product concept | 7d | 2023-02-03 | 2023-02-13 | 3 | 0d |  | Design | 56h | 5,600 |
| 12 | 1.2.4 | Evaluate and select initial product design | 7d | 2023-02-23 | 2023-03-03 | 4, 5, 6, 7 | 0d |  | Design; Development | 112h | 10,360 |
| 13 | 1.3 | **Product design and development** | 89d | 2023-03-06 | 2023-07-06 |  | 0d |  |  | 5000h | 230,900 |
| 14 | 1.3.1 | **Hardware development** | 47d | 2023-03-06 | 2023-05-09 |  | 28d |  |  | 2616h | 120,640 |
| 15 | 1.3.1.1 | **PCB design** | 42d | 2023-03-06 | 2023-05-02 |  | 28d | 49d |  | 1456h | 67,340 |
| 16 | 1.3.1.1.1 | Network module | 21d | 2023-03-06 | 2023-04-03 | 12 | 49d | 21d | OC Design Team; OC Development Team | 336h | 15,540 |
| 17 | 1.3.1.1.2 | Processor design | 21d | 2023-03-06 | 2023-04-03 | 12 | 49d | 21d | OC Design Team; OC Development Team | 336h | 15,540 |
| 18 | 1.3.1.1.3 | GPU and RAM | 7d | 2023-04-24 | 2023-05-02 | 12 | 28d | 0d | OC Design Team; OC Development Team | 112h | 5,180 |
| 19 | 1.3.1.1.4 | Storage and optical drive | 21d | 2023-04-04 | 2023-05-02 | 12 | 28d | 0d | OC Design Team; OC Development Team | 336h | 15,540 |
| 20 | 1.3.1.1.5 | Sensors | 21d | 2023-04-04 | 2023-05-02 | 12 | 28d | 0d | OC Design Team; OC Development Team | 336h | 15,540 |
| 21 | 1.3.1.2 | **Panel design** | 35d | 2023-03-06 | 2023-04-21 |  | 35d |  | OC Design Team; OC Development Team | 1120h | 51,800 |
| 22 | 1.3.1.2.1 | Metal casing | 21d | 2023-03-06 | 2023-04-03 | 12 | 49d | 21d | OC Design Team; OC Development Team | 336h | 15,540 |
| 23 | 1.3.1.2.2 | Display | 7d | 2023-04-04 | 2023-04-12 | 12 | 42d | 14d | OC Design Team; OC Development Team | 112h | 5,180 |
| 24 | 1.3.1.2.3 | Switches | 7d | 2023-04-13 | 2023-04-21 | 12 | 35d | 7d | OC Design Team; OC Development Team | 112h | 5,180 |
| 25 | 1.3.1.3 | Hardware doccumentation | 5d | 2023-05-03 | 2023-05-09 | 16, 17, 18, 19, 20, 22, 23, 24 | 28d |  | OC Documentation | 40h | 1,500 |

| ID | WBS | Task | Type | Duration | Start | Finish | Predecessors | Total slack | Free slack | Resources | Work | Cost |
| --- | --- | --- | --- | --- | --- | --- | --- | --- | --- | --- | --- | --- |
| 26 | 1.3.2 | **Software development** |  | 75d | 2023-03-06 | 2023-06-16 |  | 0d |  |  | 2160h | 99,900 |
| 27 | 1.3.2.1 | UI design |  | 60d | 2023-03-06 | 2023-05-26 | 12 | 10d |  | OC Design Team; OC Development Team | 960h | 44,400 |
| 28 | 1.3.2.2 | Patch design |  | 70d | 2023-03-06 | 2023-06-09 | 12 | 0d |  | OC Design Team; OC Development Team | 1120h | 51,800 |
| 29 | 1.3.2.3 | Software documentation |  | 5d | 2023-06-12 | 2023-06-16 | 27, 28 | 0d |  | OC Design Team; OC Development Team | 80h | 3,700 |
| 30 | 1.3.3 | Design verification and validation |  | 14d | 2023-06-19 | 2023-07-06 | 25, 29 | 0d |  | OC Design Team; OC Development Team | 224h | 10,360 |
| 31 | 1.4 | **Component sourcing and procurement** |  | 27d | 2023-08-17 | 2023-09-22 |  | 4d |  |  | 216h | 8,100 |
| 32 | 1.4.1 | Source components and material |  | 15d | 2023-08-17 | 2023-09-06 | 40 | 4d | 0d | OC Purchasing | 120h | 4,500 |
| 33 | 1.4.2 | Finalize component contracts |  | 7d | 2023-09-07 | 2023-09-15 | 32 | 4d | 0d | OC Purchasing | 56h | 2,100 |
| 34 | 1.4.3 | Manage component delivery schedule |  | 5d | 2023-09-18 | 2023-09-22 | 33 | 4d |  | OC Purchasing | 40h | 1,500 |
| 35 | 1.5 | **Assembly and Testing** |  | 29d | 2023-07-07 | 2023-08-16 |  | 4d |  |  | 776h | 42,180 |
| 36 | 1.5.1 | **Assembly testing and validation of preprocessing units** |  | 24d | 2023-07-07 | 2023-08-09 |  | 4d |  |  | 656h | 36,880 |
| 37 | 1.5.1.1 | Prototype design |  | 12d | 2023-07-07 | 2023-07-24 | 30 | 4d | 0d | Development; Assembly/Test; OC Assembly/Test; OC Development Team | 384h | 23,760 |
| 38 | 1.5.1.2 | Prototype assembly |  | 7d | 2023-07-25 | 2023-08-02 | 37 | 4d | 0d | OC Assembly/Test; OC Development Team | 112h | 4,620 |
| 39 | 1.5.1.3 | Prototype testing |  | 5d | 2023-08-03 | 2023-08-09 | 38 | 4d | 0d | Assembly/Test; OC Assembly/Test; OC Design Team; OC Development Team | 160h | 8,500 |
| 40 | 1.5.2 | Addressing any design issues or defects |  | 5d | 2023-08-10 | 2023-08-16 | 39 | 4d | 0d | OC Assembly/Test; OC Design Team; OC Development Team | 120h | 5,300 |
| 41 | 1.6 | **Mass production** |  | 73d | 2023-07-07 | 2023-10-17 |  | 0d |  |  | 608h | 25,280 |
| 42 | 1.6.1 | Establish production process |  | 60d | 2023-07-07 | 2023-09-28 | 30 | 0d |  | OC Assembly/Test | 480h | 19,200 |
| 43 | 1.6.2 | Assembly and batch maufacturing |  | 10d | 2023-09-29 | 2023-10-12 | 42, 34 | 0d |  | OC Assembly/Test | 80h | 3,200 |
| 44 | 1.6.3 | Qualiity control and Rolling out first batch |  | 3d | 2023-10-13 | 2023-10-17 | 43 | 0d |  | Assembly/Test; OC Assembly/Test | 48h | 2,880 |
| 45 | 1.7 | **Logistics and Distribution** |  | 0d | 2023-02-13 | 2023-02-13 |  | 176d |  |  |  |  |
| 46 | 1.7.1 | Develop logiostics plan | milestone | 0d | 2023-02-13 | 2023-02-13 | 11 | 176d | 0d |  |  |  |
| 47 | 1.7.2 | Packaging and shipping | milestone | 0d | 2023-02-13 | 2023-02-13 | 46 | 176d | 0d |  |  |  |
| 48 | 1.7.3 | Inventory and warehousing | milestone | 0d | 2023-02-13 | 2023-02-13 | 46, 47 | 176d | 0d |  |  |  |
| 49 | 1.7.4 | Coordinated product delivery and distribution | milestone | 0d | 2023-02-13 | 2023-02-13 | 48 | 176d | 0d |  |  |  |

| ID | WBS | Task | Type | Duration | Start | Finish | Predecessors | Total slack |
| --- | --- | --- | --- | --- | --- | --- | --- | --- |
| 50 | 1.8 | **Post -Launch Process** |  | 0d | 2023-02-13 | 2023-02-13 |  | 176d |
| 51 | 1.8.1 | Provide technical support and after sales customer services | milestone | 0d | 2023-02-13 | 2023-02-13 | 49 | 176d |
| 52 | 1.8.2 | Monitoring product performance | milestone | 0d | 2023-02-13 | 2023-02-13 | 49 | 176d |
| 53 | 1.8.3 | Addressing issues and performance improvements | milestone | 0d | 2023-02-13 | 2023-02-13 | 49 | 176d |
