# One Box_Project_Copy 2

Schedule from MS Project, 2023-01-02 to 2023-11-17, costs in $.
NC State University

## Calendars

- Standard: Mon-Fri 08:00-12:00, 13:00-17:00; Sat-Sun off.

## Resources

| Resource | Group | Rate |
| --- | --- | --- |
| Design | R&D | 100 |
| Documentation | R&D | 75 |
| Assembly/Test | R&D | 80 |
| Purchasing | Procurement | 75 |
| Development | R&D | 85 |
| Fianance | Finance | 100 |
| Marketing | Marketing | 75 |
| OC Design Team | R&D | 100 |
| OC Development Team | R&D | 85 |
| OC Assembly/Test | R&D | 80 |
| OC Finance | Finance | 100 |
| OC Purchasing | Oprocurement | 75 |
| OC Documentation | Documentation | 75 |

## Schedule

| ID | WBS | Task | Duration | Start | Finish | Predecessors | Baseline start | Baseline finish | Baseline duration | Total slack | Free slack | Resources | Work | Cost | Baseline cost |
| --- | --- | --- | --- | --- | --- | --- | --- | --- | --- | --- | --- | --- | --- | --- | --- |
| 1 | 1 | **Magic Box Console** | 230d | 2023-01-02 | 2023-11-17 |  | 2023-01-02 | 2023-12-19 | 252d | 0d |  |  | 5960h | 609,640 | 575,720 |
| 2 | 1.1 | **Project Planning and Management** | 19d | 2023-01-27 | 2023-02-22 |  | 2023-01-27 | 2023-02-22 | 19d | 0d |  |  | 296h | 28,760 | 28,760 |
| 3 | 1.1.1 | Define project scope and objectives | 5d | 2023-01-27 | 2023-02-02 | 10 | 2023-01-27 | 2023-02-02 | 5d | 0d |  | Design | 40h | 4,000 | 4,000 |
| 4 | 1.1.2 | Develop project schedule | 7d | 2023-02-14 | 2023-02-22 | 11 | 2023-02-14 | 2023-02-22 | 7d | 0d |  | Design; Development | 112h | 10,360 | 10,360 |
| 5 | 1.1.3 | Establish project budget | 7d | 2023-02-14 | 2023-02-22 | 11 | 2023-02-14 | 2023-02-22 | 7d | 0d |  | Design; Fianance | 112h | 11,200 | 11,200 |
| 6 | 1.1.4 | Assemble project team | 2d | 2023-02-14 | 2023-02-15 | 11 | 2023-02-14 | 2023-02-15 | 2d | 5d |  | Design | 16h | 1,600 | 1,600 |
| 7 | 1.1.5 | Develop project communication plan | 2d | 2023-02-16 | 2023-02-17 | 11 | 2023-02-16 | 2023-02-17 | 2d | 3d |  | Design | 16h | 1,600 | 1,600 |
| 8 | 1.2 | **Requirement and concept development** | 45d | 2023-01-02 | 2023-03-03 |  | 2023-01-02 | 2023-03-03 | 45d | 0d |  |  | 376h | 32,960 | 32,960 |
| 9 | 1.2.1 | Conduct market research | 12d | 2023-01-02 | 2023-01-17 |  | 2023-01-02 | 2023-01-17 | 12d | 0d |  | Marketing | 96h | 7,200 | 7,200 |
| 10 | 1.2.2 | Define product requirements | 7d | 2023-01-18 | 2023-01-26 | 9 | 2023-01-18 | 2023-01-26 | 7d | 0d |  | Marketing; Design | 112h | 9,800 | 9,800 |
| 11 | 1.2.3 | Develop product concept | 7d | 2023-02-03 | 2023-02-13 | 3 | 2023-02-03 | 2023-02-13 | 7d | 0d |  | Design | 56h | 5,600 | 5,600 |
| 12 | 1.2.4 | Evaluate and select initial product design | 7d | 2023-02-23 | 2023-03-03 | 4, 5, 6, 7 | 2023-02-23 | 2023-03-03 | 7d | 0d |  | Design; Development | 112h | 10,360 | 10,360 |
| 13 | 1.3 | Business Process Outsourcing | 14d | 2023-05-08 | 2023-05-25 | 12FS+45d | 2023-05-08 | 2023-05-25 | 14d | 0d |  | Fianance; Design; Documentation | 336h | 30,800 | 30,800 |
| 14 | 1.4 | **Product design and development** | 62d | 2023-05-26 | 2023-08-21 |  | 2023-05-26 | 2023-09-07 | 75d | 0d |  |  | 3608h | 390,800 | 367,080 |
| 15 | 1.4.1 | **Hardware development** | 47d | 2023-05-26 | 2023-07-31 |  | 2023-05-26 | 2023-07-31 | 47d | 10d |  |  | 2056h | 189,480 | 189,480 |
| 16 | 1.4.1.1 | **PCB design** | 28d | 2023-05-26 | 2023-07-04 |  | 2023-05-26 | 2023-07-04 | 28d | 24d |  |  | 1456h | 134,680 | 134,680 |
| 17 | 1.4.1.1.1 | Network module | 21d | 2023-05-26 | 2023-06-23 | 12, 13 | 2023-05-26 | 2023-06-23 | 21d | 31d | 21d | OC Design Team; OC Development Team | 336h | 31,080 | 31,080 |
| 18 | 1.4.1.1.2 | Processor design | 21d | 2023-05-26 | 2023-06-23 | 12, 13 | 2023-05-26 | 2023-06-23 | 21d | 31d | 21d | OC Design Team; OC Development Team | 336h | 31,080 | 31,080 |
| 19 | 1.4.1.1.3 | GPU and RAM | 7d | 2023-06-26 | 2023-07-04 | 12, 13 | 2023-06-26 | 2023-07-04 | 7d | 24d | 14d | OC Design Team; OC Development Team | 112h | 10,360 | 10,360 |
| 20 | 1.4.1.1.4 | Storage and optical drive | 21d | 2023-05-26 | 2023-06-23 | 12, 13 | 2023-05-26 | 2023-06-23 | 21d | 31d | 21d | OC Design Team; OC Development Team | 336h | 31,080 | 31,080 |
| 21 | 1.4.1.1.5 | Sensors | 21d | 2023-05-26 | 2023-06-23 | 12, 13 | 2023-05-26 | 2023-06-23 | 21d | 31d | 21d | OC Design Team; OC Development Team | 336h | 31,080 | 31,080 |
| 22 | 1.4.1.2 | **Panel design** | 21d | 2023-06-26 | 2023-07-24 |  | 2023-06-26 | 2023-07-24 | 21d | 10d |  |  | 560h | 51,800 | 51,800 |
| 23 | 1.4.1.2.1 | Metal casing | 21d | 2023-06-26 | 2023-07-24 | 12, 13 | 2023-06-26 | 2023-07-24 | 21d | 10d | 0d | OC Design Team; OC Development Team | 336h | 31,080 | 31,080 |
| 24 | 1.4.1.2.2 | Display | 7d | 2023-06-26 | 2023-07-04 | 12, 13 | 2023-06-26 | 2023-07-04 | 7d | 24d | 14d | OC Design Team; OC Development Team | 112h | 10,360 | 10,360 |
| 25 | 1.4.1.2.3 | Switches | 7d | 2023-06-26 | 2023-07-04 | 12, 13 | 2023-06-26 | 2023-07-04 | 7d | 24d | 14d | OC Design Team; OC Development Team | 112h | 10,360 | 10,360 |
| 26 | 1.4.1.3 | Hardware doccumentation | 5d | 2023-07-25 | 2023-07-31 | 17, 18, 19, 20, 21, 23, 24, 25 | 2023-07-25 | 2023-07-31 | 5d | 10d |  | OC Documentation | 40h | 3,000 | 3,000 |

| ID | WBS | Task | Type | Duration | Start | Finish | Predecessors | Baseline start | Baseline finish | Baseline duration | Total slack | Free slack | Resources | Work | Cost | Baseline cost |
| --- | --- | --- | --- | --- | --- | --- | --- | --- | --- | --- | --- | --- | --- | --- | --- | --- |
| 27 | 1.4.2 | **Software development** |  | 57d | 2023-05-26 | 2023-08-14 |  | 2023-05-26 | 2023-08-31 | 70d | 0d |  |  | 1472h | 193,920 | 170,200 |
| 28 | 1.4.2.1 | UI design |  | 35d | 2023-06-16 | 2023-08-03 | 12, 13 | 2023-06-16 | 2023-08-17 | 45d | 5d |  | OC Design Team; OC Development Team | 560h | 73,400 | 66,600 |
| 29 | 1.4.2.2 | Patch design |  | 55d | 2023-05-26 | 2023-08-10 | 12, 13 | 2023-05-26 | 2023-08-28 | 67d | 0d |  | OC Design Team; OC Development Team | 880h | 115,480 | 99,160 |
| 30 | 1.4.2.3 | Software documentation |  | 2d | 2023-08-11 | 2023-08-14 | 28, 29 | 2023-08-29 | 2023-08-31 | 3d | 0d |  | OC Design Team; OC Development Team | 32h | 5,040 | 4,440 |
| 31 | 1.4.3 | Design verification and validation |  | 5d | 2023-08-15 | 2023-08-21 | 26, 30 | 2023-09-01 | 2023-09-07 | 5d | 0d |  | OC Design Team; OC Development Team | 80h | 7,400 | 7,400 |
| 32 | 1.5 | **Component sourcing and procurement** |  | 24d | 2023-10-04 | 2023-11-06 |  | 2023-10-23 | 2023-12-05 | 32d | 0d |  |  | 192h | 28,800 | 19,200 |
| 33 | 1.5.1 | Source components and material |  | 10d | 2023-10-04 | 2023-10-17 | 41 | 2023-10-23 | 2023-11-15 | 18d | 0d |  | OC Purchasing | 80h | 20,400 | 10,800 |
| 34 | 1.5.2 | Finalize component contracts |  | 7d | 2023-10-18 | 2023-10-26 | 33 | 2023-11-16 | 2023-11-24 | 7d | 0d |  | OC Purchasing | 56h | 4,200 | 4,200 |
| 35 | 1.5.3 | Manage component delivery schedule |  | 7d | 2023-10-27 | 2023-11-06 | 34 | 2023-11-27 | 2023-12-05 | 7d | 0d |  | OC Purchasing | 56h | 4,200 | 4,200 |
| 36 | 1.6 | **Assembly and Testing** |  | 31d | 2023-08-22 | 2023-10-03 |  | 2023-09-08 | 2023-10-20 | 31d | 0d |  |  | 664h | 56,600 | 56,600 |
| 37 | 1.6.1 | **Assembly testing and validation of preprocessing units** |  | 24d | 2023-08-22 | 2023-09-22 |  | 2023-09-08 | 2023-10-11 | 24d | 0d |  |  | 496h | 41,760 | 41,760 |
| 38 | 1.6.1.1 | Prototype design |  | 12d | 2023-08-22 | 2023-09-06 | 31 | 2023-09-08 | 2023-09-25 | 12d | 0d |  | OC Development Team; OC Assembly/Test | 192h | 15,840 | 15,840 |
| 39 | 1.6.1.2 | Prototype assembly |  | 5d | 2023-09-07 | 2023-09-13 | 38 | 2023-09-26 | 2023-10-02 | 5d | 0d |  | OC Development Team; OC Assembly/Test | 80h | 6,600 | 6,600 |
| 40 | 1.6.1.3 | Prototype testing |  | 7d | 2023-09-14 | 2023-09-22 | 39 | 2023-10-03 | 2023-10-11 | 7d | 0d |  | OC Design Team; OC Development Team; OC Assembly/Test; Assembly/Test | 224h | 19,320 | 19,320 |
| 41 | 1.6.2 | Addressing any design issues or defects |  | 7d | 2023-09-25 | 2023-10-03 | 40 | 2023-10-12 | 2023-10-20 | 7d | 0d |  | OC Design Team; OC Development Team; OC Assembly/Test | 168h | 14,840 | 14,840 |
| 42 | 1.7 | **Mass production** |  | 64d | 2023-08-22 | 2023-11-17 |  | 2023-09-08 | 2023-12-19 | 73d | 0d |  |  | 488h | 40,920 | 40,320 |
| 43 | 1.7.1 | Establish production process |  | 50d | 2023-08-22 | 2023-10-30 | 31 | 2023-09-08 | 2023-11-16 | 50d | 5d |  | OC Assembly/Test | 400h | 32,000 | 32,000 |
| 44 | 1.7.2 | Assembly and batch maufacturing |  | 7d | 2023-11-07 | 2023-11-15 | 43, 35 | 2023-12-06 | 2023-12-14 | 7d | 0d |  | OC Assembly/Test | 56h | 4,480 | 4,480 |
| 45 | 1.7.3 | Qualiity control and Rolling out first batch |  | 2d | 2023-11-16 | 2023-11-17 | 44 | 2023-12-15 | 2023-12-19 | 3d | 0d |  | Assembly/Test; OC Assembly/Test | 32h | 4,440 | 3,840 |
| 46 | 1.8 | **Logistics and Distribution** |  | 0d | 2023-02-13 | 2023-02-13 |  | 2023-02-13 | 2023-02-13 | 0d | 199d |  |  |  |  |  |
| 47 | 1.8.1 | Develop logiostics plan | milestone | 0d | 2023-02-13 | 2023-02-13 | 11 | 2023-02-13 | 2023-02-13 | 0d | 199d | 0d |  |  |  |  |
| 48 | 1.8.2 | Packaging and shipping | milestone | 0d | 2023-02-13 | 2023-02-13 | 47 | 2023-02-13 | 2023-02-13 | 0d | 199d | 0d |  |  |  |  |
| 49 | 1.8.3 | Inventory and warehousing | milestone | 0d | 2023-02-13 | 2023-02-13 | 47, 48 | 2023-02-13 | 2023-02-13 | 0d | 199d | 0d |  |  |  |  |
| 50 | 1.8.4 | Coordinated product delivery and distribution | milestone | 0d | 2023-02-13 | 2023-02-13 | 49 | 2023-02-13 | 2023-02-13 | 0d | 199d | 0d |  |  |  |  |

| ID | WBS | Task | Type | Duration | Start | Finish | Predecessors | Baseline start | Baseline finish | Baseline duration | Total slack |
| --- | --- | --- | --- | --- | --- | --- | --- | --- | --- | --- | --- |
| 51 | 1.9 | **Post -Launch Process** |  | 0d | 2023-02-13 | 2023-02-13 |  | 2023-02-13 | 2023-02-13 | 0d | 199d |
| 52 | 1.9.1 | Provide technical support and after sales customer services | milestone | 0d | 2023-02-13 | 2023-02-13 | 50 | 2023-02-13 | 2023-02-13 | 0d | 199d |
| 53 | 1.9.2 | Monitoring product performance | milestone | 0d | 2023-02-13 | 2023-02-13 | 50 | 2023-02-13 | 2023-02-13 | 0d | 199d |
| 54 | 1.9.3 | Addressing issues and performance improvements | milestone | 0d | 2023-02-13 | 2023-02-13 | 50 | 2023-02-13 | 2023-02-13 | 0d | 199d |
